# AppDev_PRINCE2WithScrum

Schedule from MS Project, 2025-02-28 to 2025-09-25, status date 2025-07-28, costs in €, A marks actual dates.
Microsoft

## Calendars

- Standard: Mon-Fri 08:00-12:00, 13:00-17:00; Sat-Sun off.

## Resources

| Resource | Rate |
| --- | --- |
| Project Manager | 100 |
| Senior User |  |
| Senior Supplier |  |
| Executive |  |
| Team Manager |  |
| Project Board |  |
| WebSr1 | 75 |
| WebSr2 | 75 |
| WebDev1 | 50 |
| WebDev2 | 50 |
| BkndSr1 | 75 |
| BkndSr2 | 75 |
| BkndDev1 | 50 |
| BkndDev2 | 50 |
| Security Engineer | 75 |

## Schedule

| ID | WBS | Task | Type | Duration | Start | Finish | Predecessors | Complete | Remaining | Baseline start | Baseline finish | Baseline duration | Total slack | Resources | Work | Actual work | Cost | Baseline cost | Actual cost |
| --- | --- | --- | --- | --- | --- | --- | --- | --- | --- | --- | --- | --- | --- | --- | --- | --- | --- | --- | --- |
| 1 | 1 | **Delivery Level: (Scrum)** |  | 149d | 2025-02-28 A | 2025-09-25 |  | 71% | 43.21d | 2025-02-28 | 2025-08-28 | 129d | 0d |  | 9136h | 6560h | 572,000 | 480,000 | 412,000 |
| 2 | 1.1 | **Managing Product Delivery (MP)** |  | 149d | 2025-02-28 A | 2025-09-25 |  | 71% | 43.21d | 2025-02-28 | 2025-08-28 | 129d | 0d |  | 9136h | 6560h | 572,000 | 480,000 | 412,000 |
| 3 | 1.1.1 | **Stage 1 (Alpha)** |  | 104d | 2025-02-28 A | 2025-07-24 A |  | 100% |  | 2025-02-28 | 2025-06-26 | 84d |  |  | 6560h | 6560h | 412,000 | 320,000 | 412,000 |
| 4 | 1.1.1.1 | **Management Products** |  | 0d | 2025-07-24 A | 2025-07-24 A | 9 | 100% |  | 2025-06-26 | 2025-06-26 | 0d |  |  |  |  |  |  |  |
| 5 | 1.1.1.1.1 | Quality Register updated | milestone | 0d | 2025-07-24 A | 2025-07-24 A |  | 100% |  | 2025-06-26 | 2025-06-26 | 0d |  |  |  |  |  |  |  |
| 6 | 1.1.1.1.2 | Configuration Item Records updated | milestone | 0d | 2025-07-24 A | 2025-07-24 A |  | 100% |  | 2025-06-26 | 2025-06-26 | 0d |  |  |  |  |  |  |  |
| 7 | 1.1.1.1.3 | Team Plan created | milestone | 0d | 2025-07-24 A | 2025-07-24 A |  | 100% |  | 2025-06-26 | 2025-06-26 | 0d |  |  |  |  |  |  |  |
| 8 | 1.1.1.1.4 | Checkpoint Reports created | milestone | 0d | 2025-07-24 A | 2025-07-24 A |  | 100% |  | 2025-06-26 | 2025-06-26 | 0d |  |  |  |  |  |  |  |
| 9 | 1.1.1.2 | **Activities** |  | 104d | 2025-02-28 A | 2025-07-24 A |  | 100% |  | 2025-02-28 | 2025-06-26 | 84d |  |  | 6560h | 6560h | 412,000 | 320,000 | 412,000 |
| 10 | 1.1.1.2.1 | Accept a Work Package | milestone | 0d | 2025-02-28 A | 2025-02-28 A |  | 100% |  | 2025-02-28 | 2025-02-28 | 0d |  |  |  |  |  |  |  |
| 11 | 1.1.1.2.2 | **Execute a Work Package** |  | 104d | 2025-02-28 A | 2025-07-24 A | 10 | 100% |  | 2025-02-28 | 2025-06-26 | 84d |  |  | 6560h | 6560h | 412,000 | 320,000 | 412,000 |
| 12 | 1.1.1.2.2.1 | **Sprint 1** |  | 20d | 2025-02-28 A | 2025-03-28 A |  | 100% |  | 2025-02-28 | 2025-03-28 | 20d |  |  | 1280h | 1280h | 80,000 | 80,000 | 80,000 |
| 13 | 1.1.1.2.2.1.1 | Sprint Planning |  | 1d | 2025-02-28 A | 2025-03-03 A |  | 100% |  | 2025-02-28 | 2025-03-03 | 1d |  | WebDev1; WebDev2; WebSr1; WebSr2; BkndDev1; BkndDev2; BkndSr1; BkndSr2 | 64h | 64h | 4,000 | 4,000 | 4,000 |
| 14 | 1.1.1.2.2.1.2 | Execute Sprint |  | 18d | 2025-03-03 A | 2025-03-27 A | 13 | 100% |  | 2025-03-03 | 2025-03-27 | 18d |  | WebDev1; WebDev2; WebSr1; WebSr2; BkndDev1; BkndDev2; BkndSr1; BkndSr2 | 1152h | 1152h | 72,000 | 72,000 | 72,000 |
| 15 | 1.1.1.2.2.1.3 | Sprint Review |  | 0.5d | 2025-03-27 A | 2025-03-27 A | 14 | 100% |  | 2025-03-27 | 2025-03-27 | 0.5d |  | WebDev1; WebDev2; WebSr1; WebSr2; BkndDev1; BkndDev2; BkndSr1; BkndSr2 | 32h | 32h | 2,000 | 2,000 | 2,000 |
| 16 | 1.1.1.2.2.1.4 | Sprint Retrospective |  | 0.5d | 2025-03-27 A | 2025-03-28 A | 15 | 100% |  | 2025-03-27 | 2025-03-28 | 0.5d |  | WebDev1; WebDev2; WebSr1; WebSr2; BkndDev1; BkndDev2; BkndSr1; BkndSr2 | 32h | 32h | 2,000 | 2,000 | 2,000 |
| 17 | 1.1.1.2.2.2 | Buffer |  | 1d | 2025-03-28 A | 2025-03-31 A | 12 | 100% |  | 2025-03-28 | 2025-03-31 | 1d |  |  |  |  |  |  |  |
| 18 | 1.1.1.2.2.3 | **Sprint 2** |  | 20d | 2025-03-31 A | 2025-04-28 A | 17 | 100% |  | 2025-03-31 | 2025-04-28 | 20d |  |  | 1280h | 1280h | 80,000 | 80,000 | 80,000 |
| 19 | 1.1.1.2.2.3.1 | Sprint Planning |  | 1d | 2025-03-31 A | 2025-04-01 A |  | 100% |  | 2025-03-31 | 2025-04-01 | 1d |  | WebDev1; WebDev2; WebSr1; WebSr2; BkndDev1; BkndDev2; BkndSr1; BkndSr2 | 64h | 64h | 4,000 | 4,000 | 4,000 |
| 20 | 1.1.1.2.2.3.2 | Execute Sprint |  | 18d | 2025-04-01 A | 2025-04-25 A | 19 | 100% |  | 2025-04-01 | 2025-04-25 | 18d |  | WebDev1; WebDev2; WebSr1; WebSr2; BkndDev1; BkndDev2; BkndSr1; BkndSr2 | 1152h | 1152h | 72,000 | 72,000 | 72,000 |
| 21 | 1.1.1.2.2.3.3 | Sprint Review |  | 0.5d | 2025-04-25 A | 2025-04-25 A | 20 | 100% |  | 2025-04-25 | 2025-04-25 | 0.5d |  | WebDev1; WebDev2; WebSr1; WebSr2; BkndDev1; BkndDev2; BkndSr1; BkndSr2 | 32h | 32h | 2,000 | 2,000 | 2,000 |
| 22 | 1.1.1.2.2.3.4 | Sprint Retrospective |  | 0.5d | 2025-04-25 A | 2025-04-28 A | 21 | 100% |  | 2025-04-25 | 2025-04-28 | 0.5d |  | WebDev1; WebDev2; WebSr1; WebSr2; BkndDev1; BkndDev2; BkndSr1; BkndSr2 | 32h | 32h | 2,000 | 2,000 | 2,000 |
| 23 | 1.1.1.2.2.4 | Buffer |  | 2d | 2025-04-28 A | 2025-04-30 A | 18 | 100% |  | 2025-04-28 | 2025-04-30 | 2d |  |  |  |  |  |  |  |
| 24 | 1.1.1.2.2.5 | **Sprint 3** |  | 20d | 2025-04-30 A | 2025-05-28 A | 23 | 100% |  | 2025-04-30 | 2025-05-28 | 20d |  |  | 1280h | 1280h | 80,000 | 80,000 | 80,000 |
| 25 | 1.1.1.2.2.5.1 | Sprint Planning |  | 1d | 2025-04-30 A | 2025-05-01 A |  | 100% |  | 2025-04-30 | 2025-05-01 | 1d |  | WebDev1; WebDev2; WebSr1; WebSr2; BkndDev1; BkndDev2; BkndSr1; BkndSr2 | 64h | 64h | 4,000 | 4,000 | 4,000 |
| 26 | 1.1.1.2.2.5.2 | Execute Sprint |  | 18d | 2025-05-01 A | 2025-05-27 A | 25 | 100% |  | 2025-05-01 | 2025-05-27 | 18d |  | WebDev1; WebDev2; WebSr1; WebSr2; BkndDev1; BkndDev2; BkndSr1; BkndSr2 | 1152h | 1152h | 72,000 | 72,000 | 72,000 |
| 27 | 1.1.1.2.2.5.3 | Sprint Review |  | 0.5d | 2025-05-27 A | 2025-05-27 A | 26 | 100% |  | 2025-05-27 | 2025-05-27 | 0.5d |  | WebDev1; WebDev2; WebSr1; WebSr2; BkndDev1; BkndDev2; BkndSr1; BkndSr2 | 32h | 32h | 2,000 | 2,000 | 2,000 |
| 28 | 1.1.1.2.2.5.4 | Sprint Retrospective |  | 0.5d | 2025-05-27 A | 2025-05-28 A | 27 | 100% |  | 2025-05-27 | 2025-05-28 | 0.5d |  | WebDev1; WebDev2; WebSr1; WebSr2; BkndDev1; BkndDev2; BkndSr1; BkndSr2 | 32h | 32h | 2,000 | 2,000 | 2,000 |
| 29 | 1.1.1.2.2.6 | Buffer |  | 1d | 2025-05-28 A | 2025-05-29 A | 24 | 100% |  | 2025-05-28 | 2025-05-29 | 1d |  |  |  |  |  |  |  |

| ID | WBS | Task | Type | Duration | Start | Finish | Predecessors | Complete | Remaining | Baseline start | Baseline finish | Baseline duration | Total slack | Resources | Work | Actual work | Cost | Baseline cost | Actual cost |
| --- | --- | --- | --- | --- | --- | --- | --- | --- | --- | --- | --- | --- | --- | --- | --- | --- | --- | --- | --- |
| 30 | 1.1.1.2.2.7 | **Sprint 4** |  | 20d | 2025-05-29 A | 2025-06-26 A | 29 | 100% |  | 2025-05-29 | 2025-06-26 | 20d |  |  | 1440h | 1440h | 92,000 | 80,000 | 92,000 |
| 31 | 1.1.1.2.2.7.1 | Sprint Planning |  | 1d | 2025-05-29 A | 2025-05-30 A |  | 100% |  | 2025-05-29 | 2025-05-30 | 1d |  | BkndDev1; BkndDev2; BkndSr1; BkndSr2; Security Engineer; WebDev1; WebDev2; WebSr1; WebSr2 | 72h | 72h | 4,600 | 4,000 | 4,600 |
| 32 | 1.1.1.2.2.7.2 | Execute Sprint |  | 18d | 2025-05-30 A | 2025-06-25 A | 31 | 100% |  | 2025-05-30 | 2025-06-25 | 18d |  | BkndDev1; BkndDev2; BkndSr1; BkndSr2; Security Engineer; WebDev1; WebDev2; WebSr1; WebSr2 | 1296h | 1296h | 82,800 | 72,000 | 82,800 |
| 33 | 1.1.1.2.2.7.3 | Sprint Review |  | 0.5d | 2025-06-25 A | 2025-06-25 A | 32 | 100% |  | 2025-06-25 | 2025-06-25 | 0.5d |  | BkndDev1; BkndDev2; BkndSr2; BkndSr1; Security Engineer; WebDev1; WebDev2; WebSr1; WebSr2 | 36h | 36h | 2,300 | 2,000 | 2,300 |
| 34 | 1.1.1.2.2.7.4 | Sprint Retrospective |  | 0.5d | 2025-06-25 A | 2025-06-26 A | 33 | 100% |  | 2025-06-25 | 2025-06-26 | 0.5d |  | BkndDev2; BkndDev1; BkndSr1; BkndSr2; Security Engineer; WebDev1; WebDev2; WebSr1; WebSr2 | 36h | 36h | 2,300 | 2,000 | 2,300 |
| 35 | 1.1.1.2.2.8 | **Sprint 4+** |  | 20d | 2025-06-26 A | 2025-07-24 A |  | 100% |  |  |  |  |  |  | 1280h | 1280h | 80,000 |  | 80,000 |
| 36 | 1.1.1.2.2.8.1 | Sprint Planning |  | 1d | 2025-06-26 A | 2025-06-27 A |  | 100% |  |  |  |  |  | BkndDev1; BkndDev2; BkndSr1; BkndSr2; WebDev1; WebDev2; WebSr1; WebSr2 | 64h | 64h | 4,000 |  | 4,000 |
| 37 | 1.1.1.2.2.8.2 | Execute Sprint |  | 18d | 2025-06-27 A | 2025-07-23 A | 36 | 100% |  |  |  |  |  | BkndDev1; BkndDev2; BkndSr1; BkndSr2; WebDev1; WebDev2; WebSr1; WebSr2 | 1152h | 1152h | 72,000 |  | 72,000 |
| 38 | 1.1.1.2.2.8.3 | Sprint Review |  | 0.5d | 2025-07-23 A | 2025-07-23 A | 37 | 100% |  |  |  |  |  | BkndDev1; BkndDev2; BkndSr2; BkndSr1; WebDev1; WebDev2; WebSr1; WebSr2 | 32h | 32h | 2,000 |  | 2,000 |
| 39 | 1.1.1.2.2.8.4 | Sprint Retrospective |  | 0.5d | 2025-07-23 A | 2025-07-24 A | 38 | 100% |  |  |  |  |  | BkndDev1; BkndDev2; BkndSr1; BkndSr2; WebDev1; WebDev2; WebSr1; WebSr2 | 32h | 32h | 2,000 |  | 2,000 |
| 40 | 1.1.1.2.3 | **Deliver a Work Package** |  | 0d | 2025-07-24 A | 2025-07-24 A | 11 | 100% |  | 2025-06-26 | 2025-06-26 | 0d |  |  |  |  |  |  |  |
| 41 | 1.1.1.2.3.1 | Alpha Release | milestone | 0d | 2025-07-24 A | 2025-07-24 A |  | 100% |  | 2025-06-26 | 2025-06-26 | 0d |  |  |  |  |  |  |  |
| 42 | 1.1.2 | Buffer |  | 2d | 2025-07-24 A | 2025-07-28 | 3 | 90% | 0.21d | 2025-06-26 | 2025-06-30 | 2d | 0d |  |  |  |  |  |  |
| 43 | 1.1.3 | **Stage 2 (Beta)** |  | 20d | 2025-07-28 | 2025-08-25 | 42 |  |  | 2025-06-30 | 2025-07-28 | 20d | 0d |  | 1280h |  | 80,000 | 80,000 |  |
| 44 | 1.1.3.1 | **Management Products** |  | 0d | 2025-08-25 | 2025-08-25 | 49 |  |  | 2025-07-28 | 2025-07-28 | 0d | 0d |  |  |  |  |  |  |
| 45 | 1.1.3.1.1 | Quality Register updated | milestone | 0d | 2025-08-25 | 2025-08-25 |  |  |  | 2025-07-28 | 2025-07-28 | 0d | 0d |  |  |  |  |  |  |
| 46 | 1.1.3.1.2 | Configuration Item Records updated | milestone | 0d | 2025-08-25 | 2025-08-25 |  |  |  | 2025-07-28 | 2025-07-28 | 0d | 0d |  |  |  |  |  |  |
| 47 | 1.1.3.1.3 | Team Plan created | milestone | 0d | 2025-08-25 | 2025-08-25 |  |  |  | 2025-07-28 | 2025-07-28 | 0d | 0d |  |  |  |  |  |  |
| 48 | 1.1.3.1.4 | Checkpoint Reports created | milestone | 0d | 2025-08-25 | 2025-08-25 |  |  |  | 2025-07-28 | 2025-07-28 | 0d | 0d |  |  |  |  |  |  |
| 49 | 1.1.3.2 | **Activities** |  | 20d | 2025-07-28 | 2025-08-25 |  |  |  | 2025-06-30 | 2025-07-28 | 20d | 0d |  | 1280h |  | 80,000 | 80,000 |  |
| 50 | 1.1.3.2.1 | Accept a Work Package | milestone | 0d | 2025-07-28 | 2025-07-28 |  |  |  | 2025-06-30 | 2025-06-30 | 0d | 0d |  |  |  |  |  |  |
| 51 | 1.1.3.2.2 | **Execute a Work Package** |  | 20d | 2025-07-28 | 2025-08-25 | 50 |  |  | 2025-06-30 | 2025-07-28 | 20d | 0d |  | 1280h |  | 80,000 | 80,000 |  |
| 52 | 1.1.3.2.2.1 | **Sprint 5** |  | 20d | 2025-07-28 | 2025-08-25 | 42 |  |  | 2025-06-30 | 2025-07-28 | 20d | 0d |  | 1280h |  | 80,000 | 80,000 |  |
| 53 | 1.1.3.2.2.1.1 | Sprint Planning |  | 1d | 2025-07-28 | 2025-07-29 |  |  |  | 2025-06-30 | 2025-07-01 | 1d | 0d | WebDev1; WebDev2; WebSr1; WebSr2; BkndDev1; BkndDev2; BkndSr1; BkndSr2 | 64h |  | 4,000 | 4,000 |  |
| 54 | 1.1.3.2.2.1.2 | Execute Sprint |  | 18d | 2025-07-29 | 2025-08-22 | 53 |  |  | 2025-07-01 | 2025-07-25 | 18d | 0d | WebDev1; WebDev2; WebSr1; WebSr2; BkndDev1; BkndDev2; BkndSr1; BkndSr2 | 1152h |  | 72,000 | 72,000 |  |
| 55 | 1.1.3.2.2.1.3 | Sprint Review |  | 0.5d | 2025-08-22 | 2025-08-22 | 54 |  |  | 2025-07-25 | 2025-07-25 | 0.5d | 0d | WebDev1; WebDev2; WebSr1; WebSr2; BkndDev1; BkndDev2; BkndSr1; BkndSr2 | 32h |  | 2,000 | 2,000 |  |
| 56 | 1.1.3.2.2.1.4 | Sprint Retrospective |  | 0.5d | 2025-08-22 | 2025-08-25 | 55 |  |  | 2025-07-25 | 2025-07-28 | 0.5d | 0d | WebDev1; WebDev2; WebSr1; WebSr2; BkndDev1; BkndDev2; BkndSr1; BkndSr2 | 32h |  | 2,000 | 2,000 |  |

| ID | WBS | Task | Type | Duration | Start | Finish | Predecessors | Baseline start | Baseline finish | Baseline duration | Total slack | Resources | Work | Cost | Baseline cost |
| --- | --- | --- | --- | --- | --- | --- | --- | --- | --- | --- | --- | --- | --- | --- | --- |
| 57 | 1.1.3.2.3 | **Deliver a Work Package** |  | 0d | 2025-08-25 | 2025-08-25 | 51 | 2025-07-28 | 2025-07-28 | 0d | 0d |  |  |  |  |
| 58 | 1.1.3.2.3.1 | Beta Release | milestone | 0d | 2025-08-25 | 2025-08-25 |  | 2025-07-28 | 2025-07-28 | 0d | 0d |  |  |  |  |
| 59 | 1.1.4 | Buffer |  | 3d | 2025-08-25 | 2025-08-28 | 43 | 2025-07-28 | 2025-07-31 | 3d | 0d |  | 16h |  |  |
| 60 | 1.1.5 | **Final Stage (GA)** |  | 20d | 2025-08-28 | 2025-09-25 | 59 | 2025-07-31 | 2025-08-28 | 20d | 0d |  | 1280h | 80,000 | 80,000 |
| 61 | 1.1.5.1 | **Management Products** |  | 0d | 2025-09-25 | 2025-09-25 | 66 | 2025-08-28 | 2025-08-28 | 0d | 0d |  |  |  |  |
| 62 | 1.1.5.1.1 | Quality Register updated | milestone | 0d | 2025-09-25 | 2025-09-25 |  | 2025-08-28 | 2025-08-28 | 0d | 0d |  |  |  |  |
| 63 | 1.1.5.1.2 | Configuration Item Records updated | milestone | 0d | 2025-09-25 | 2025-09-25 |  | 2025-08-28 | 2025-08-28 | 0d | 0d |  |  |  |  |
| 64 | 1.1.5.1.3 | Team Plan created | milestone | 0d | 2025-09-25 | 2025-09-25 |  | 2025-08-28 | 2025-08-28 | 0d | 0d |  |  |  |  |
| 65 | 1.1.5.1.4 | Checkpoint Reports created | milestone | 0d | 2025-09-25 | 2025-09-25 |  | 2025-08-28 | 2025-08-28 | 0d | 0d |  |  |  |  |
| 66 | 1.1.5.2 | **Activities** |  | 20d | 2025-08-28 | 2025-09-25 |  | 2025-07-31 | 2025-08-28 | 20d | 0d |  | 1280h | 80,000 | 80,000 |
| 67 | 1.1.5.2.1 | Accept a Work Package | milestone | 0d | 2025-08-28 | 2025-08-28 |  | 2025-07-31 | 2025-07-31 | 0d | 0d |  |  |  |  |
| 68 | 1.1.5.2.2 | **Execute a Work Package** |  | 20d | 2025-08-28 | 2025-09-25 | 67 | 2025-07-31 | 2025-08-28 | 20d | 0d |  | 1280h | 80,000 | 80,000 |
| 69 | 1.1.5.2.2.1 | **Sprint 6** |  | 20d | 2025-08-28 | 2025-09-25 | 59 | 2025-07-31 | 2025-08-28 | 20d | 0d |  | 1280h | 80,000 | 80,000 |
| 70 | 1.1.5.2.2.1.1 | Sprint Planning |  | 1d | 2025-08-28 | 2025-08-29 |  | 2025-07-31 | 2025-08-01 | 1d | 0d | WebDev1; WebDev2; WebSr1; WebSr2; BkndDev1; BkndDev2; BkndSr1; BkndSr2 | 64h | 4,000 | 4,000 |
| 71 | 1.1.5.2.2.1.2 | Execute Sprint |  | 18d | 2025-08-29 | 2025-09-24 | 70 | 2025-08-01 | 2025-08-27 | 18d | 0d | WebDev1; WebDev2; WebSr1; WebSr2; BkndDev1; BkndDev2; BkndSr1; BkndSr2 | 1152h | 72,000 | 72,000 |
| 72 | 1.1.5.2.2.1.3 | Sprint Review |  | 0.5d | 2025-09-24 | 2025-09-24 | 71 | 2025-08-27 | 2025-08-27 | 0.5d | 0d | WebDev1; WebDev2; WebSr1; WebSr2; BkndDev1; BkndDev2; BkndSr1; BkndSr2 | 32h | 2,000 | 2,000 |
| 73 | 1.1.5.2.2.1.4 | Sprint Retrospective |  | 0.5d | 2025-09-24 | 2025-09-25 | 72 | 2025-08-27 | 2025-08-28 | 0.5d | 0d | WebDev1; WebDev2; WebSr1; WebSr2; BkndDev1; BkndDev2; BkndSr1; BkndSr2 | 32h | 2,000 | 2,000 |
| 74 | 1.1.5.2.3 | **Deliver a Work Package** |  | 0d | 2025-09-25 | 2025-09-25 | 68 | 2025-08-28 | 2025-08-28 | 0d | 0d |  |  |  |  |
| 75 | 1.1.5.2.3.1 | GA Release | milestone | 0d | 2025-09-25 | 2025-09-25 |  | 2025-08-28 | 2025-08-28 | 0d | 0d |  |  |  |  |
